# 试点项目

How a schedule from a web Gantt chart changed from version to version. A marks actual dates.

## Version 1 (saved 2025-04-03)

| ID | WBS | Task | Duration | Start | Finish |
| --- | --- | --- | --- | --- | --- |
| 2 | 1 | **示范变电站 部署实施工作** | 19d | 2025-04-12 | 2025-04-30 |
| 3 |  | 预警摄像头安装、人脸识别设备安装 | 5d | 2025-04-16 | 2025-04-20 |
| 4 |  | 网络贯通联调 | 14d | 2025-04-12 | 2025-04-25 |
| 5 |  | 智巡接入联调 | 10d | 2025-04-21 | 2025-04-30 |
| 6 | 2 | **智巡系统工作** | 20d | 2025-04-01 | 2025-04-20 |
| 7 |  | 摄像机接入 | 14d | 2025-04-07 | 2025-04-20 |
| 8 |  | 站端智巡作业监督功能开发 | 14d | 2025-04-07 | 2025-04-20 |
| 9 |  | 算法开发 | 20d | 2025-04-01 | 2025-04-20 |
| 10 |  | 交互接口开发 | 18d | 2025-04-03 | 2025-04-20 |
| 11 | 3 | **智巡集控工作** | 18d | 2025-04-03 | 2025-04-20 |
| 12 |  | 视频接入 | 6d | 2025-04-10 | 2025-04-15 |
| 13 |  | 交互接口开发 | 18d | 2025-04-03 | 2025-04-20 |
| 14 | 4 | **智巡系统 现场部署调试** | 10d | 2025-04-21 | 2025-04-30 |
| 15 |  | 系统部署 | 1d | 2025-04-21 | 2025-04-21 |
| 16 |  | 系统调试 | 10d | 2025-04-21 | 2025-04-30 |
| 17 | 5 | **流媒体中台开发** | 14d | 2025-04-01 | 2025-04-14 |
| 18 |  | 视频终端接入服务 | 14d | 2025-04-01 | 2025-04-14 |
| 19 |  | 边缘数据中心抽图服务 | 11d | 2025-04-01 | 2025-04-11 |
| 20 |  | AI图像识别代理服务 | 6d | 2025-04-01 | 2025-04-06 |
| 21 |  | 与风控平台的定制化服务开发 | 14d | 2025-04-01 | 2025-04-14 |
| 22 |  | 与风控平台的集成服务开发 | 9d | 2025-04-01 | 2025-04-09 |
| 23 |  | 与智巡系统的集成服务开发 | 9d | 2025-04-01 | 2025-04-09 |
| 24 | 6 | **风控平台开发** | 20d | 2025-04-01 | 2025-04-20 |
| 25 |  | 监控界面 | 11d | 2025-04-10 | 2025-04-20 |
| 26 |  | 综合展示 | 11d | 2025-04-10 | 2025-04-20 |
| 27 |  | 预警告警详情 | 6d | 2025-04-10 | 2025-04-15 |
| 28 |  | 白名单管理 | 6d | 2025-04-10 | 2025-04-15 |
| 29 |  | 日计划监控画面 | 6d | 2025-04-10 | 2025-04-15 |
| 30 |  | 与流媒体接入集成开发 | 6d | 2025-04-15 | 2025-04-20 |
| 31 |  | 无计划判定逻辑服务 | 6d | 2025-04-10 | 2025-04-15 |
| 32 |  | 基建作业变电站信息排查 | 10d | 2025-04-01 | 2025-04-10 |
| 33 |  | 系统间联调 | 9d | 2025-04-22 | 2025-04-30 |

## Version 2 (saved 2025-04-04)

Last finish stays 2025-04-30.

Changed:

| ID | Task | Start | Finish | Duration |
| --- | --- | --- | --- | --- |
| 2 | **示范变电站 部署实施工作** | 2025-04-12 → 2025-04-10 (-2d) |  | 19d → 21d |
| 3 | 预警摄像头安装、人脸识别设备安装 | 2025-04-16 → 2025-04-10 (-6d) | 2025-04-20 → 2025-04-15 (-5d) | 5d → 6d |

## Version 3 (saved 2025-04-14)

Last finish stays 2025-04-30.

Added:

| ID | Task | Duration | Start | Finish |
| --- | --- | --- | --- | --- |
| 12 | 视频接入（需与地市公司设备专业用户完成沟通，由设备专业下达可接入的通知） | 1d | 2025-04-01 | 2025-04-01 |

Removed: 12 视频接入

Changed:

| ID | Task | Start | Finish | Duration |
| --- | --- | --- | --- | --- |
| 11 | **智巡集控工作** | 2025-04-03 → 2025-04-01 (-2d) |  | 18d → 20d |
| 17 | **流媒体中台开发** |  | 2025-04-14 → 2025-04-19 (+5d) | 14d → 19d |
| 18 | 视频终端接入服务 |  | 2025-04-14 → 2025-04-17 (+3d) | 14d → 17d |
| 19 | 边缘数据中心抽图服务 |  | 2025-04-11 → 2025-04-16 (+5d) | 11d → 16d |
| 20 | AI图像识别代理服务 |  | 2025-04-06 → 2025-04-10 (+4d) | 6d → 10d |
| 21 | 与风控平台的定制化服务开发 |  | 2025-04-14 → 2025-04-19 (+5d) | 14d → 19d |
| 24 | **风控平台开发** |  | 2025-04-20 → 2025-04-16 (-4d) | 20d → 16d |
| 25 | 监控界面 |  | 2025-04-20 → 2025-04-16 (-4d) | 11d → 7d |
| 26 | 综合展示 |  | 2025-04-20 → 2025-04-16 (-4d) | 11d → 7d |
| 27 | 预警告警详情 |  | 2025-04-15 → 2025-04-16 (+1d) | 6d → 7d |
| 30 | 与流媒体接入集成开发 |  | 2025-04-20 → 2025-04-16 (-4d) | 6d → 2d |

## Version 4 (saved 2025-04-24)

Last finish stays 2025-04-30.

Changed:

| ID | Task | Start | Finish | Duration |
| --- | --- | --- | --- | --- |
| 17 | **流媒体中台开发** |  | 2025-04-19 → 2025-04-20 (+1d) | 19d → 20d |
| 22 | 与风控平台的集成服务开发 | 2025-04-01 → 2025-04-09 (+8d) | 2025-04-09 → 2025-04-18 (+9d) | 9d → 10d |
| 23 | 与智巡系统的集成服务开发 | 2025-04-01 → 2025-04-10 (+9d) | 2025-04-09 → 2025-04-20 (+11d) | 9d → 11d |
